# Microsoft Office Project 2003 deployment

Schedule from ProjectLibre, 2003-09-15 to 2004-03-08.

## Calendars

- Standard[Imported]: Mon-Fri 08:00-12:00, 13:00-17:00; Sat-Sun off.

## Resources

| Resource |
| --- |
| Unassigned |
| Database Administrator |
| Network Administrator |
| Business Analysts |
| Project Managers |
| IT Staff |
| Server Administrator |
| Systems Architect |
| Desktop Support |
| Application Deployment |
| Team Members |
| Business Sponsors |
| Application Developers |

## Schedule

| ID | WBS | Task | Type | Duration | Start | Finish | Predecessors | Resources |
| --- | --- | --- | --- | --- | --- | --- | --- | --- |
| 1 | 1 | **Microsoft Office Project 2003 Deployment** |  | 125.75d | 2003-09-15 | 2004-03-08 |  |  |
| 2 | 1.1 | **Envisioning** |  | 8.5d | 2003-09-15 | 2003-09-25 |  |  |
| 3 | 1.1.1 | Evaluate corporate business objectives (per EPM Enterprise Implementation Framework) |  | 2.5d | 2003-09-15 | 2003-09-17 |  | Business Analysts; Business Sponsors |
| 4 | 1.1.2 | Determine technology goals and objectives |  | 2d | 2003-09-17 | 2003-09-19 | 3 | Business Analysts; Business Sponsors |
| 5 | 1.1.3 | Formulate preliminary cost/benefit analysis |  | 1d | 2003-09-19 | 2003-09-22 | 4 | Business Analysts; Business Sponsors |
| 6 | 1.1.4 | Determine project vision and scope (for example, lab, pilot, international/regional deployment, coexistence strategies) |  | 1d | 2003-09-22 | 2003-09-23 | 5 | Business Analysts; Business Sponsors |
| 7 | 1.1.5 | Determine major milestones |  | 1d | 2003-09-23 | 2003-09-24 | 6 | Business Analysts; Business Sponsors |
| 8 | 1.1.6 | Secure executive sponsorship/funding |  | 1d | 2003-09-24 | 2003-09-25 | 7 | Business Analysts; Business Sponsors |
| 9 | 1.1.7 | Envisioning complete | milestone | 0d | 2003-09-25 | 2003-09-25 | 8 |  |
| 10 | 1.2 | **Planning** |  | 7.5d | 2003-09-25 | 2003-10-06 | 2 |  |
| 11 | 1.2.1 | **Plan Software Configuration** |  | 3d | 2003-09-25 | 2003-09-30 |  |  |
| 12 | 1.2.1.1 | **Design Impelementation Configuration** |  | 1d | 2003-09-25 | 2003-09-26 |  |  |
| 13 | 1.2.1.1.1 | Business analysis completed per EPM Enterprise Implementation Framework | milestone | 0d | 2003-09-25 | 2003-09-25 |  | Business Analysts |
| 14 | 1.2.1.1.2 | Configuration settings determined and documented per EPM Enterprise Implementation Framework | milestone | 0d | 2003-09-25 | 2003-09-25 |  | Business Analysts |
| 15 | 1.2.1.1.3 | Functional specifications completed per EPM Enterprise Implementation Framework | milestone | 0d | 2003-09-25 | 2003-09-25 |  | Business Analysts |
| 16 | 1.2.1.1.4 | Build implementation team |  | 1d | 2003-09-25 | 2003-09-26 |  | Business Analysts; Project Managers; Business Sponsors |
| 17 | 1.2.1.1.5 | Project success metrics defined | milestone | 0d | 2003-09-25 | 2003-09-25 |  | Business Analysts |
| 18 | 1.2.1.2 | **Determine Functional Components to Install** |  | 1d | 2003-09-26 | 2003-09-29 | 12 |  |
| 19 | 1.2.1.2.1 | Decide between Microsoft SQL Server or the MSDE |  | 1d | 2003-09-26 | 2003-09-29 |  | Database Administrator |
| 20 | 1.2.1.2.2 | Consider Microsoft SQL Server Analysis Services |  | 1d | 2003-09-26 | 2003-09-29 |  | Business Analysts |
| 21 | 1.2.1.2.3 | Consider Microsoft SharePoint Portal Server "v2.0" |  | 1d | 2003-09-26 | 2003-09-29 |  | Business Analysts |
| 22 | 1.2.1.2.4 | Consider Microsoft Windows SharePoint Services |  | 1d | 2003-09-26 | 2003-09-29 |  | Business Analysts |
| 23 | 1.2.1.2.5 | Consider Microsoft Windows Terminal Services |  | 1d | 2003-09-26 | 2003-09-29 |  | Network Administrator |
| 24 | 1.2.1.3 | **Identify Configuration Constraints** |  | 1d | 2003-09-29 | 2003-09-30 | 18 |  |
| 25 | 1.2.1.3.1 | Review feature requirements |  | 1d | 2003-09-29 | 2003-09-30 |  | Business Analysts |
| 26 | 1.2.1.3.2 | Review organizational software standards |  | 1d | 2003-09-29 | 2003-09-30 |  | Business Analysts; Systems Architect |
| 27 | 1.2.1.3.3 | Determine implementation constraints including architecture and deployment |  | 0.5d | 2003-09-29 | 2003-09-29 |  | Database Administrator; Network Administrator; Systems Architect |
| 28 | 1.2.1.4 | Plan software configuration complete | milestone | 0d | 2003-09-30 | 2003-09-30 | 12, 18, 24 |  |

Notes:
- 1: This Project template is designed to facilitate the deployment of Microsoft Office Project 2003 in a corporate environment. The template is designed to focus the implementation on key steps that can ensure a successful, well-planned implementation. See Help to learn more about each section of this template and where to find additional information. For information on the EPM Enterprise Implementation Framework, see http://www.microsoft.com/project/.

| ID | WBS | Task | Duration | Start | Finish | Predecessors | Resources |
| --- | --- | --- | --- | --- | --- | --- | --- |
| 29 | 1.2.2 | **Perform Capacity Planning** | 3d | 2003-09-30 | 2003-10-03 | 11 |  |
| 30 | 1.2.2.1 | Identify roles of users | 1d | 2003-09-30 | 2003-10-01 |  | Business Analysts |
| 31 | 1.2.2.2 | **Determine number of users in various role** | 1d | 2003-10-01 | 2003-10-02 | 30 |  |
| 32 | 1.2.2.2.1 | Document number of Project Managers | 1d | 2003-10-01 | 2003-10-02 |  | Business Analysts |
| 33 | 1.2.2.2.2 | Document number of Team Members | 1d | 2003-10-01 | 2003-10-02 |  | Business Analysts |
| 34 | 1.2.2.2.3 | Document number of Executives | 1d | 2003-10-01 | 2003-10-02 |  | Business Analysts |
| 35 | 1.2.2.2.4 | Document number of External Project Managers | 1d | 2003-10-01 | 2003-10-02 |  | Business Analysts |
| 36 | 1.2.2.3 | **Determine usage patterns by role** | 1d | 2003-10-01 | 2003-10-02 | 30 |  |
| 37 | 1.2.2.3.1 | Document usage patterns of Project Managers | 1d | 2003-10-01 | 2003-10-02 |  | Business Analysts |
| 38 | 1.2.2.3.2 | Document usage patterns of Team Members | 1d | 2003-10-01 | 2003-10-02 |  | Business Analysts |
| 39 | 1.2.2.3.3 | Document usage patterns of Executives | 1d | 2003-10-01 | 2003-10-02 |  | Business Analysts |
| 40 | 1.2.2.3.4 | Document usage patterns of External Project Managers | 1d | 2003-10-01 | 2003-10-02 |  | Business Analysts |
| 41 | 1.2.2.4 | **Document Server Capacity** | 1d | 2003-10-02 | 2003-10-03 | 36, 31 |  |
| 42 | 1.2.2.4.1 | **Determine Bandwidth Requirements** | 1d | 2003-10-02 | 2003-10-03 |  |  |
| 43 | 1.2.2.4.1.1 | Bandwidth requirements for users | 1d | 2003-10-02 | 2003-10-03 |  | Network Administrator |
| 44 | 1.2.2.4.1.2 | Bandwidth requirements for servers | 1d | 2003-10-02 | 2003-10-03 |  | Network Administrator |
| 45 | 1.2.2.4.2 | **Determine Disk Space Requirements** | 1d | 2003-10-02 | 2003-10-03 |  |  |
| 46 | 1.2.2.4.2.1 | Disk space requirements for databases | 1d | 2003-10-02 | 2003-10-03 |  | Database Administrator |
| 47 | 1.2.2.4.2.2 | Disk space requirements for document storage | 1d | 2003-10-02 | 2003-10-03 |  | Database Administrator |
| 48 | 1.2.2.4.2.3 | Disk space requirements for indexes | 1d | 2003-10-02 | 2003-10-03 |  | Database Administrator |
| 49 | 1.2.2.4.2.4 | Disk space requirements for redundancy | 1d | 2003-10-02 | 2003-10-03 |  | Database Administrator |
| 50 | 1.2.2.4.3 | **Determine Server Requirements** | 0.5d | 2003-10-02 | 2003-10-02 |  |  |
| 51 | 1.2.2.4.3.1 | Number of servers for application demands | 0.5d | 2003-10-02 | 2003-10-02 |  | Network Administrator; Systems Architect |
| 52 | 1.2.2.4.3.2 | Identify servers needed for testing environment | 0.5d | 2003-10-02 | 2003-10-02 |  | Network Administrator; Systems Architect |
| 53 | 1.2.2.4.3.3 | Identify servers needed for training environment | 0.5d | 2003-10-02 | 2003-10-02 |  | Network Administrator; Systems Architect |
| 54 | 1.2.2.4.3.4 | Determine number of servers for redundancy | 0.5d | 2003-10-02 | 2003-10-02 |  | Network Administrator; Systems Architect |
| 55 | 1.2.2.4.3.5 | Determine role of servers | 0.5d | 2003-10-02 | 2003-10-02 |  | Network Administrator; Systems Architect |
| 56 | 1.2.2.4.3.6 | Determine memory per server | 0.5d | 2003-10-02 | 2003-10-02 |  | Network Administrator; Systems Architect |
| 57 | 1.2.2.4.3.7 | Determine processing power per server | 0.5d | 2003-10-02 | 2003-10-02 |  | Network Administrator; Systems Architect |

| ID | WBS | Task | Type | Duration | Start | Finish | Predecessors | Resources |
| --- | --- | --- | --- | --- | --- | --- | --- | --- |
| 58 | 1.2.2.5 | **Inventory and Plan Desktop Configuration** |  | 1d | 2003-10-02 | 2003-10-03 | 36, 31 |  |
| 59 | 1.2.2.5.1 | Inventory desktop hardware |  | 1d | 2003-10-02 | 2003-10-03 |  | Desktop Support |
| 60 | 1.2.2.5.2 | Inventory desktop software |  | 1d | 2003-10-02 | 2003-10-03 |  | Desktop Support |
| 61 | 1.2.2.5.3 | Identify user profiles and customizations |  | 1d | 2003-10-02 | 2003-10-03 |  | Network Administrator; Desktop Support |
| 62 | 1.2.2.5.4 | Identify files for distribution |  | 1d | 2003-10-02 | 2003-10-03 |  | Desktop Support |
| 63 | 1.2.2.5.5 | Identify multilingual requirements |  | 1d | 2003-10-02 | 2003-10-03 |  | Desktop Support |
| 64 | 1.2.2.6 | Perform capacity planning complete | milestone | 0d | 2003-10-03 | 2003-10-03 | 31, 36, 41, 58 |  |
| 65 | 1.2.3 | **Evaluate Migration Requirements** |  | 3.5d | 2003-09-30 | 2003-10-03 | 11 |  |
| 66 | 1.2.3.1 | **Identify Coexistence Issues** |  | 1d | 2003-09-30 | 2003-10-01 |  |  |
| 67 | 1.2.3.1.1 | Identify coexistence issues with other enterprise applications |  | 1d | 2003-09-30 | 2003-10-01 |  | Desktop Support |
| 68 | 1.2.3.1.2 | Determine if earlier versions of Microsoft Project will coexist |  | 1d | 2003-09-30 | 2003-10-01 |  | Business Analysts |
| 69 | 1.2.3.1.3 | Determine strategy for managing coexistence issues |  | 0.5d | 2003-09-30 | 2003-09-30 |  | Business Analysts; Systems Architect |
| 70 | 1.2.3.2 | **Identify Migration Strategies** |  | 3.5d | 2003-09-30 | 2003-10-03 |  |  |
| 71 | 1.2.3.2.1 | Identify projects for conversion/import |  | 1d | 2003-09-30 | 2003-10-01 |  | Project Managers |
| 72 | 1.2.3.2.2 | Identify strategy for projects not being imported/converted |  | 1d | 2003-09-30 | 2003-10-01 |  | Project Managers |
| 73 | 1.2.3.2.3 | Identify macros for migration |  | 0.5d | 2003-09-30 | 2003-09-30 |  | Project Managers; Application Developers |
| 74 | 1.2.3.2.4 | Identify templates for migration |  | 1d | 2003-10-01 | 2003-10-01 | 73 | Project Managers |
| 75 | 1.2.3.2.5 | Identify custom integrated applications for migration |  | 1d | 2003-10-02 | 2003-10-02 | 74 | Project Managers; Application Developers |
| 76 | 1.2.3.2.6 | Identify custom Project Guides for migration |  | 1d | 2003-10-03 | 2003-10-03 | 72, 75 | Project Managers; Application Developers |
| 77 | 1.2.3.2.7 | Review database migration tool for upgrading from Microsoft Project Server 2002 |  | 1d | 2003-09-30 | 2003-10-01 |  | Database Administrator |
| 78 | 1.2.3.2.8 | Review migration tool for upgrading from Microsoft SharePoint Team Services |  | 1d | 2003-09-30 | 2003-10-01 |  | Systems Architect |
| 79 | 1.2.3.3 | Evaluate migration requirements complete | milestone | 0d | 2003-10-03 | 2003-10-03 | 66, 70 |  |
| 80 | 1.2.4 | **Plan Systems Integration** |  | 1d | 2003-09-30 | 2003-10-01 | 11 |  |
| 81 | 1.2.4.1 | **Identify Systems with Information Needed in EPM Environment** |  | 1d | 2003-09-30 | 2003-10-01 |  |  |
| 82 | 1.2.4.1.1 | Evaluate HR and resource pools |  | 1d | 2003-09-30 | 2003-10-01 |  | Systems Architect |
| 83 | 1.2.4.1.2 | Evaluate cost tracking systems |  | 1d | 2003-09-30 | 2003-10-01 |  | Systems Architect |
| 84 | 1.2.4.1.3 | Evaluate other enterprise reporting systems |  | 1d | 2003-09-30 | 2003-10-01 |  | Systems Architect |
| 85 | 1.2.4.1.4 | Evaluate time and labor systems |  | 1d | 2003-09-30 | 2003-10-01 |  | Systems Architect |
| 86 | 1.2.4.1.5 | Evaluate other line of business systems |  | 1d | 2003-09-30 | 2003-10-01 |  | Systems Architect |
| 87 | 1.2.4.2 | Plan systems integration complete | milestone | 0d | 2003-10-01 | 2003-10-01 | 81 |  |

| ID | WBS | Task | Type | Duration | Start | Finish | Predecessors | Resources |
| --- | --- | --- | --- | --- | --- | --- | --- | --- |
| 88 | 1.2.5 | **Plan Infrastructure** |  | 4.5d | 2003-09-30 | 2003-10-06 | 11 |  |
| 89 | 1.2.5.1 | **Evaluate and Upgrade Network** |  | 3.5d | 2003-09-30 | 2003-10-03 |  |  |
| 90 | 1.2.5.1.1 | **Identify Existing Connections** |  | 1d | 2003-09-30 | 2003-10-01 |  |  |
| 91 | 1.2.5.1.1.1 | Diagram/Document LAN connections |  | 1d | 2003-09-30 | 2003-10-01 |  | Network Administrator; Systems Architect |
| 92 | 1.2.5.1.1.2 | Diagram/Document WAN connections |  | 1d | 2003-09-30 | 2003-10-01 |  | Network Administrator; Systems Architect |
| 93 | 1.2.5.1.1.3 | Evaluate external user connections |  | 1d | 2003-09-30 | 2003-10-01 |  | Network Administrator; Systems Architect |
| 94 | 1.2.5.1.2 | **Handle Upgrades** |  | 2.5d | 2003-10-01 | 2003-10-03 | 90 |  |
| 95 | 1.2.5.1.2.1 | Increase bandwidth as needed |  | 1.5d | 2003-10-01 | 2003-10-02 |  | Network Administrator; Systems Architect |
| 96 | 1.2.5.1.2.2 | Configure a VPN solution as needed |  | 2.5d | 2003-10-01 | 2003-10-03 |  | Network Administrator; Systems Architect |
| 97 | 1.2.5.2 | **Evaluate and Upgrade Hardware** |  | 1.5d | 2003-09-30 | 2003-10-01 |  |  |
| 98 | 1.2.5.2.1 | Identify hardware for each project service |  | 0.5d | 2003-09-30 | 2003-09-30 |  | Server Administrator; Systems Architect |
| 99 | 1.2.5.2.2 | Identify hardware vendor |  | 0.5d | 2003-10-01 | 2003-10-01 | 98 | Server Administrator; Systems Architect |
| 100 | 1.2.5.2.3 | Order hardware |  | 0.5d | 2003-10-01 | 2003-10-01 | 99 | Server Administrator; Systems Architect |
| 101 | 1.2.5.3 | **Evaluate Software** |  | 1d | 2003-09-30 | 2003-10-01 |  |  |
| 102 | 1.2.5.3.1 | Evaluate Microsoft Windows 2000 Server/Microsoft Windows Server 2003 |  | 1d | 2003-09-30 | 2003-10-01 |  | Server Administrator; Systems Architect |
| 103 | 1.2.5.3.2 | Evaluate Microsoft Internet Information Server |  | 1d | 2003-09-30 | 2003-10-01 |  | Server Administrator; Systems Architect |
| 104 | 1.2.5.3.3 | Evaluate Microsoft SQL Server |  | 1d | 2003-09-30 | 2003-10-01 |  | Server Administrator; Systems Architect |
| 105 | 1.2.5.3.4 | Evaluate Microsoft SQL Analysis Services |  | 1d | 2003-09-30 | 2003-10-01 |  | Server Administrator; Systems Architect |
| 106 | 1.2.5.3.5 | Evaluate Microsoft Windows SharePoint Services |  | 1d | 2003-09-30 | 2003-10-01 |  | Server Administrator; Systems Architect |
| 107 | 1.2.5.3.6 | Evaluate Microsoft SharePoint Portal Server "v2.0" |  | 1d | 2003-09-30 | 2003-10-01 |  | Server Administrator; Systems Architect |
| 108 | 1.2.5.4 | **Document Infrastructure** |  | 1d | 2003-10-06 | 2003-10-06 | 101, 97, 89 |  |
| 109 | 1.2.5.4.1 | Create physical implementation diagram. Include: SQL Server, Analysis Services, Microsoft Office Project Server 2003, Windows SharePoint Services, Microsoft SharePoint Portal Server "v2.0", Views Notification Services, and Session State Server |  | 1d | 2003-10-06 | 2003-10-06 |  | Network Administrator |
| 110 | 1.2.5.4.2 | **Create Model Configuration Definitions** |  | 1d | 2003-10-06 | 2003-10-06 |  |  |
| 111 | 1.2.5.4.2.1 | Create Microsoft Internet Explorer definition |  | 1d | 2003-10-06 | 2003-10-06 |  | Network Administrator; Server Administrator; Desktop Support |
| 112 | 1.2.5.4.2.2 | Create Project Server 2003 definition |  | 1d | 2003-10-06 | 2003-10-06 |  | Database Administrator; Network Administrator; Server Administrator; Systems Architect |
| 113 | 1.2.5.4.2.3 | Create SQL Server definition |  | 1d | 2003-10-06 | 2003-10-06 |  | Database Administrator; Network Administrator; Server Administrator; Systems Architect |
| 114 | 1.2.5.4.2.4 | Create SQL Server Analysis Services definition |  | 1d | 2003-10-06 | 2003-10-06 |  | Database Administrator; Network Administrator; Server Administrator; Systems Architect |
| 115 | 1.2.5.4.2.5 | Create IIS definition |  | 1d | 2003-10-06 | 2003-10-06 |  | Network Administrator; Server Administrator; Systems Architect |
| 116 | 1.2.5.4.2.6 | Create Windows SharePoint Services definition |  | 1d | 2003-10-06 | 2003-10-06 |  | Network Administrator; Server Administrator; Systems Architect |
| 117 | 1.2.5.4.2.7 | Create Microsoft SharePoint Portal Server "v2.0" definition |  | 1d | 2003-10-06 | 2003-10-06 |  | Network Administrator; Server Administrator; Systems Architect |
| 118 | 1.2.5.5 | Plan infrastructure complete | milestone | 0d | 2003-10-06 | 2003-10-06 | 108 |  |

| ID | WBS | Task | Type | Duration | Start | Finish | Predecessors | Resources |
| --- | --- | --- | --- | --- | --- | --- | --- | --- |
| 119 | 1.2.6 | **Define Security** |  | 1d | 2003-09-30 | 2003-10-01 | 11 |  |
| 120 | 1.2.6.1 | Consider use of SSL to access SharePoint technologies and Project Server |  | 1d | 2003-09-30 | 2003-10-01 |  | Network Administrator; Systems Architect |
| 121 | 1.2.6.2 | **Define and Document Network Service Accounts** |  | 1d | 2003-09-30 | 2003-10-01 |  |  |
| 122 | 1.2.6.2.1 | Set up SQL Server service account |  | 1d | 2003-09-30 | 2003-10-01 |  | Network Administrator |
| 123 | 1.2.6.2.2 | Set up Project Server COM+ package accounts |  | 1d | 2003-09-30 | 2003-10-01 |  | Network Administrator |
| 124 | 1.2.6.2.3 | Configure Windows SharePoint Services service accounts |  | 1d | 2003-09-30 | 2003-10-01 |  | Network Administrator |
| 125 | 1.2.6.2.4 | Configure Microsoft SharePoint Portal Server "v2.0" service accounts |  | 1d | 2003-09-30 | 2003-10-01 |  | Network Administrator |
| 126 | 1.2.6.3 | **Define Project Server Security Scheme** |  | 1d | 2003-09-30 | 2003-10-01 |  |  |
| 127 | 1.2.6.3.1 | Document groups |  | 1d | 2003-09-30 | 2003-10-01 |  | Project Managers |
| 128 | 1.2.6.3.2 | Document categories |  | 1d | 2003-09-30 | 2003-10-01 |  | Project Managers |
| 129 | 1.2.6.3.3 | Document security templates |  | 1d | 2003-09-30 | 2003-10-01 |  | Project Managers |
| 130 | 1.2.6.3.4 | Determine group membership |  | 1d | 2003-09-30 | 2003-10-01 |  | Project Managers |
| 131 | 1.2.6.3.5 | Determine authentication method |  | 1d | 2003-09-30 | 2003-10-01 |  | Project Managers |
| 132 | 1.2.6.4 | Define security complete | milestone | 0d | 2003-10-01 | 2003-10-01 | 120, 121, 126 |  |
| 133 | 1.2.7 | **Define Internationalization Requirements** |  | 1d | 2003-09-30 | 2003-10-01 | 11 |  |
| 134 | 1.2.7.1 | Review currency requirements |  | 1d | 2003-09-30 | 2003-10-01 |  | Business Analysts |
| 135 | 1.2.7.2 | Review language requirements |  | 1d | 2003-09-30 | 2003-10-01 |  | Business Analysts |
| 136 | 1.2.7.3 | Define internationalization requirements complete | milestone | 0d | 2003-10-01 | 2003-10-01 | 134, 135 |  |
| 137 | 1.2.8 | Planning complete | milestone | 0d | 2003-10-06 | 2003-10-06 | 126, 119, 133, 29, 65, 80, 88 |  |
| 138 | 1.3 | **Deployment** |  | 79.75d | 2003-10-07 | 2004-01-26 | 10 |  |
| 139 | 1.3.1 | **Deploy Pilot** |  | 20d | 2003-10-07 | 2003-11-03 |  |  |
| 140 | 1.3.1.1 | **Install Servers** |  | 17d | 2003-10-07 | 2003-10-29 |  |  |
| 141 | 1.3.1.1.1 | Install hardware |  | 4d | 2003-10-07 | 2003-10-10 |  | Server Administrator |
| 142 | 1.3.1.1.2 | **Install Software** |  | 4d | 2003-10-13 | 2003-10-16 | 141 |  |
| 143 | 1.3.1.1.2.1 | Install operating system(s) |  | 4d | 2003-10-13 | 2003-10-16 |  | Server Administrator |
| 144 | 1.3.1.1.2.2 | Install appropriate operating system patches |  | 1d | 2003-10-13 | 2003-10-13 |  | Server Administrator |

| ID | WBS | Task | Duration | Start | Finish | Predecessors | Resources |
| --- | --- | --- | --- | --- | --- | --- | --- |
| 145 | 1.3.1.1.2.3 | **Install and configure SQL Server** | 1d | 2003-10-13 | 2003-10-13 |  |  |
| 146 | 1.3.1.1.2.3.1 | Install SQL Server | 0.5d | 2003-10-13 | 2003-10-13 |  | Database Administrator |
| 147 | 1.3.1.1.2.3.2 | Create Project Server database(s) (run data definition scripts or use installation tool) | 0.25d | 2003-10-13 | 2003-10-13 | 146 | Database Administrator |
| 148 | 1.3.1.1.2.3.3 | Create additional Project Server databases for additional Project Server instances | 0.25d | 2003-10-13 | 2003-10-13 | 147 | Database Administrator |
| 149 | 1.3.1.1.2.3.4 | Create Project Server service user accounts | 0.25d | 2003-10-13 | 2003-10-13 |  | Network Administrator |
| 150 | 1.3.1.1.2.3.5 | Install SQL Server Analysis Services | 0.5d | 2003-10-13 | 2003-10-13 |  | Database Administrator |
| 151 | 1.3.1.1.2.4 | Install Windows SharePoint Services | 1d | 2003-10-13 | 2003-10-13 |  | Server Administrator |
| 152 | 1.3.1.1.2.5 | Install Microsoft SharePoint Portal Server "v2.0" | 1d | 2003-10-13 | 2003-10-13 |  | Server Administrator |
| 153 | 1.3.1.1.2.6 | **Install Project Server(s)** | 1d | 2003-10-14 | 2003-10-14 | 145, 151 |  |
| 154 | 1.3.1.1.2.6.1 | Install application server(s) | 1d | 2003-10-14 | 2003-10-14 |  | Server Administrator |
| 155 | 1.3.1.1.2.6.2 | Install Project Server (or Project Server cluster) | 1d | 2003-10-14 | 2003-10-14 |  | Server Administrator |
| 156 | 1.3.1.1.2.7 | Install Terminal Services | 1d | 2003-10-13 | 2003-10-13 |  | Server Administrator |
| 157 | 1.3.1.1.2.8 | Install appropriate application patches | 1d | 2003-10-13 | 2003-10-13 |  | Server Administrator |
| 158 | 1.3.1.1.3 | **Configure Software** | 7.5d | 2003-10-17 | 2003-10-28 | 142 |  |
| 159 | 1.3.1.1.3.1 | **Configure Project Server** | 7.5d | 2003-10-17 | 2003-10-28 |  |  |
| 160 | 1.3.1.1.3.1.1 | Configure Microsoft Project Server subwebs | 0.25d | 2003-10-17 | 2003-10-17 |  | Server Administrator |
| 161 | 1.3.1.1.3.1.2 | Implement EPM Enterprise Implementation Framework outputs in enterprise global template | 2d | 2003-10-17 | 2003-10-21 | 160 | Business Analysts |
| 162 | 1.3.1.1.3.1.3 | Map resources and users to Windows user accounts | 1d | 2003-10-21 | 2003-10-22 | 161 | Network Administrator |
| 163 | 1.3.1.1.3.1.4 | Implement resources in enterprise resource pool | 1d | 2003-10-21 | 2003-10-22 | 161 | Network Administrator |
| 164 | 1.3.1.1.3.1.5 | Implement security schema in Project Server | 0.5d | 2003-10-21 | 2003-10-21 | 161 | Business Analysts |
| 165 | 1.3.1.1.3.1.6 | Implement Project Center views in Microsoft Office Project Web Access 2003 | 1d | 2003-10-21 | 2003-10-22 | 161 | Project Managers |
| 166 | 1.3.1.1.3.1.7 | Implement Project views in Microsoft Office Project Web Access 2003 | 1d | 2003-10-21 | 2003-10-22 | 161 | Project Managers |
| 167 | 1.3.1.1.3.1.8 | Implement Resource Center views in Microsoft Office Project Web Access 2003 | 1d | 2003-10-21 | 2003-10-22 | 161 | Project Managers |
| 168 | 1.3.1.1.3.1.9 | Implement Assignment views in Microsoft Office Project Web Access 2003 | 1d | 2003-10-21 | 2003-10-22 | 161 | Project Managers |
| 169 | 1.3.1.1.3.1.10 | Implement Portfolio Analyzer views in Microsoft Office Project Web Access 2003 | 0.5d | 2003-10-21 | 2003-10-21 | 161 | Project Managers; Application Developers |
| 170 | 1.3.1.1.3.1.11 | Create models in Microsoft Office Project Web Access 2003 | 0.5d | 2003-10-21 | 2003-10-21 | 161 | Project Managers |
| 171 | 1.3.1.1.3.1.12 | Obtain and configure SMTP server information | 0.25d | 2003-10-17 | 2003-10-17 | 160 | Network Administrator |
| 172 | 1.3.1.1.3.1.13 | Implement notifications and reminders in Project Server | 0.25d | 2003-10-21 | 2003-10-21 | 171, 161 | Business Analysts |

| ID | WBS | Task | Duration | Start | Finish | Predecessors | Resources |
| --- | --- | --- | --- | --- | --- | --- | --- |
| 173 | 1.3.1.1.3.1.14 | **Execute Migration Plan** | 5d | 2003-10-21 | 2003-10-28 | 172 |  |
| 174 | 1.3.1.1.3.1.14.1 | Migrate resources | 2d | 2003-10-21 | 2003-10-23 |  | Project Managers |
| 175 | 1.3.1.1.3.1.14.2 | Migrate project plans | 2d | 2003-10-21 | 2003-10-23 |  | Project Managers |
| 176 | 1.3.1.1.3.1.14.3 | Migrate templates | 1d | 2003-10-21 | 2003-10-22 |  | Project Managers |
| 177 | 1.3.1.1.3.1.14.4 | Migrate databases | 2d | 2003-10-21 | 2003-10-23 |  | Project Managers |
| 178 | 1.3.1.1.3.1.14.5 | Migrate macros | 5d | 2003-10-21 | 2003-10-28 |  | Application Developers |
| 179 | 1.3.1.1.3.1.14.6 | Migrate custom Project Guides | 5d | 2003-10-21 | 2003-10-28 |  | Application Developers |
| 180 | 1.3.1.1.4 | **Configure Microsoft SharePoint Portal Server "v2.0"** | 0.5d | 2003-10-28 | 2003-10-28 | 159 |  |
| 181 | 1.3.1.1.4.1 | Set up Microsoft SharePoint Portal Server "v2.0" connection in Microsoft Office Project Web Access 2003 | 0.5d | 2003-10-28 | 2003-10-28 |  | Server Administrator |
| 182 | 1.3.1.1.4.2 | Configure Microsoft SharePoint Portal Server "v2.0" indexing | 0.5d | 2003-10-28 | 2003-10-28 |  | Server Administrator |
| 183 | 1.3.1.1.4.3 | Connect existing team sites to the portal | 0.5d | 2003-10-28 | 2003-10-28 |  | Server Administrator |
| 184 | 1.3.1.1.5 | **Configure Windows SharePoint Services** | 1d | 2003-10-29 | 2003-10-29 | 180 |  |
| 185 | 1.3.1.1.5.1 | Validate PSCOMPlus settings | 0.25d | 2003-10-29 | 2003-10-29 |  | Server Administrator |
| 186 | 1.3.1.1.5.2 | Configure proxy server | 0.25d | 2003-10-29 | 2003-10-29 |  | Network Administrator |
| 187 | 1.3.1.1.5.3 | Configure SharePoint connection settings and site creation settings | 1d | 2003-10-29 | 2003-10-29 |  | Server Administrator |
| 188 | 1.3.1.1.5.4 | Configure Windows SharePoint Services site templates | 1d | 2003-10-29 | 2003-10-29 |  | Server Administrator |
| 189 | 1.3.1.1.5.5 | Configure cross-web security | 1d | 2003-10-29 | 2003-10-29 |  | Server Administrator |
| 190 | 1.3.1.1.6 | **Configure Analysis Services** | 1d | 2003-10-28 | 2003-10-29 | 159 |  |
| 191 | 1.3.1.1.6.1 | Assign cube roles and permissions | 1d | 2003-10-28 | 2003-10-29 |  | Database Administrator |
| 192 | 1.3.1.1.6.2 | Validate PSCOMPlus OLAP identity | 1d | 2003-10-28 | 2003-10-29 |  | Network Administrator |
| 193 | 1.3.1.2 | **Perform Desktop Deployment** | 5d | 2003-10-07 | 2003-10-13 |  |  |
| 194 | 1.3.1.2.1 | **Perform Scripted Deployment** | 2d | 2003-10-07 | 2003-10-08 |  |  |
| 195 | 1.3.1.2.1.1 | Create deployment script | 2d | 2003-10-07 | 2003-10-08 |  | Desktop Support |
| 196 | 1.3.1.2.1.2 | Schedule running of deployment script | 0.5d | 2003-10-07 | 2003-10-07 |  | Desktop Support |
| 197 | 1.3.1.2.2 | Deploy Terminal Services Client | 2.5d | 2003-10-07 | 2003-10-09 |  | Desktop Support |

Notes:
- 197: Using Terminal Services Client will improve performance if you have project managers connecting to your Project Server over a WAN.

| ID | WBS | Task | Type | Duration | Start | Finish | Predecessors | Resources |
| --- | --- | --- | --- | --- | --- | --- | --- | --- |
| 198 | 1.3.1.2.3 | **Perform Manual Deployment** |  | 3d | 2003-10-07 | 2003-10-09 |  |  |
| 199 | 1.3.1.2.3.1 | Develop specifications and documentation for running Setup |  | 3d | 2003-10-07 | 2003-10-09 |  | Desktop Support |
| 200 | 1.3.1.2.3.2 | Provide location to run Setup |  | 0.5d | 2003-10-07 | 2003-10-07 |  | Network Administrator |
| 201 | 1.3.1.2.4 | **Configure Internet Explorer** |  | 0.5d | 2003-10-07 | 2003-10-07 |  |  |
| 202 | 1.3.1.2.4.1 | Configure trusted sites |  | 0.5d | 2003-10-07 | 2003-10-07 |  | Desktop Support |
| 203 | 1.3.1.2.4.2 | Configure automatic download of ActiveX in trusted sites zone |  | 0.5d | 2003-10-07 | 2003-10-07 |  | Desktop Support |
| 204 | 1.3.1.2.4.3 | Allow cookies |  | 0.5d | 2003-10-07 | 2003-10-07 |  | Desktop Support |
| 205 | 1.3.1.2.5 | Install the Microsoft Office System on desktop as desired/needed |  | 5d | 2003-10-07 | 2003-10-13 |  | Desktop Support |
| 206 | 1.3.1.3 | Implement pilot versions of planned system integrations |  | 10d | 2003-10-14 | 2003-10-27 | 193 | Application Developers |
| 207 | 1.3.1.4 | **Test the Pilot Deployment** |  | 5d | 2003-10-28 | 2003-11-03 | 206 |  |
| 208 | 1.3.1.4.1 | Test system function |  | 3d | 2003-10-28 | 2003-10-30 |  | Project Managers |
| 209 | 1.3.1.4.2 | **Resolve issues** |  | 5d | 2003-10-28 | 2003-11-03 |  |  |
| 210 | 1.3.1.4.2.1 | Resolve connectivity problems |  | 5d | 2003-10-28 | 2003-11-03 |  | Network Administrator [25%] |
| 211 | 1.3.1.4.2.2 | Resolve installation problems |  | 5d | 2003-10-28 | 2003-11-03 |  | Database Administrator [25%]; Server Administrator [25%]; Systems Architect [25%]; Desktop Support [25%] |
| 212 | 1.3.1.4.3 | Scrub test data |  | 1d | 2003-10-28 | 2003-10-28 |  | Database Administrator |
| 213 | 1.3.1.5 | Deploy pilot complete | milestone | 0d | 2003-11-03 | 2003-11-03 | 140, 193, 207 |  |
| 214 | 1.3.2 | Compare pilot results to success criteria |  | 5d | 2003-11-04 | 2003-11-10 | 139 | Business Analysts; Project Managers; Team Members |
| 215 | 1.3.3 | Production deployment approved | milestone | 0d | 2003-11-10 | 2003-11-10 | 214 |  |
| 216 | 1.3.4 | **Deploy Production System** |  | 50.75d | 2003-11-11 | 2004-01-20 | 215 |  |
| 217 | 1.3.4.1 | **Install Servers** |  | 14.75d | 2003-11-11 | 2003-12-01 |  |  |
| 218 | 1.3.4.1.1 | Install hardware |  | 4d | 2003-11-11 | 2003-11-14 |  | Server Administrator |
| 219 | 1.3.4.1.2 | **Install Software** |  | 4d | 2003-11-17 | 2003-11-20 | 218 |  |
| 220 | 1.3.4.1.2.1 | Install operating system(s) |  | 4d | 2003-11-17 | 2003-11-20 |  | Server Administrator |
| 221 | 1.3.4.1.2.2 | Install appropriate operating system patches |  | 1d | 2003-11-17 | 2003-11-17 |  | Server Administrator |

| ID | WBS | Task | Duration | Start | Finish | Predecessors | Resources |
| --- | --- | --- | --- | --- | --- | --- | --- |
| 222 | 1.3.4.1.2.3 | **Install and Configure SQL Server** | 1d | 2003-11-17 | 2003-11-17 |  |  |
| 223 | 1.3.4.1.2.3.1 | Install SQL Server | 0.5d | 2003-11-17 | 2003-11-17 |  | Database Administrator |
| 224 | 1.3.4.1.2.3.2 | Create Project Server database(s) (run data definition scripts or use installation tool) | 0.25d | 2003-11-17 | 2003-11-17 | 223 | Database Administrator |
| 225 | 1.3.4.1.2.3.3 | Create additional Project Server databases for additional Project Server instances | 0.25d | 2003-11-17 | 2003-11-17 | 224 | Database Administrator |
| 226 | 1.3.4.1.2.3.4 | Create Project Server service user accounts | 0.25d | 2003-11-17 | 2003-11-17 |  | Network Administrator |
| 227 | 1.3.4.1.2.3.5 | Install SQL Server Analysis Services | 0.5d | 2003-11-17 | 2003-11-17 |  | Database Administrator |
| 228 | 1.3.4.1.2.4 | Install Windows SharePoint Services | 1d | 2003-11-17 | 2003-11-17 |  | Server Administrator |
| 229 | 1.3.4.1.2.5 | Install Microsoft SharePoint Portal Server "v2.0" | 1d | 2003-11-17 | 2003-11-17 |  | Server Administrator |
| 230 | 1.3.4.1.2.6 | **Install Project Server(s)** | 1d | 2003-11-18 | 2003-11-18 | 222, 228 |  |
| 231 | 1.3.4.1.2.6.1 | Install application server(s) | 1d | 2003-11-18 | 2003-11-18 |  | Server Administrator |
| 232 | 1.3.4.1.2.6.2 | Install Project Server (or Project Server cluster) | 1d | 2003-11-18 | 2003-11-18 |  | Server Administrator |
| 233 | 1.3.4.1.2.7 | Install Terminal Services | 1d | 2003-11-17 | 2003-11-17 |  | Server Administrator |
| 234 | 1.3.4.1.2.8 | Install appropriate application patches | 1d | 2003-11-17 | 2003-11-17 |  | Server Administrator |
| 235 | 1.3.4.1.3 | **Configure Software** | 6.75d | 2003-11-21 | 2003-12-01 | 219 |  |
| 236 | 1.3.4.1.3.1 | **Configure Project Server** | 5.75d | 2003-11-21 | 2003-11-28 |  |  |
| 237 | 1.3.4.1.3.1.1 | Configure Project Server subwebs | 0.25d | 2003-11-21 | 2003-11-21 |  | Server Administrator |
| 238 | 1.3.4.1.3.1.2 | Implement EPM Enterprise Implementation Framework outputs in enterprise global template | 2d | 2003-11-21 | 2003-11-25 | 237 | Business Analysts |
| 239 | 1.3.4.1.3.1.3 | Map resources and users to Windows user accounts | 1d | 2003-11-25 | 2003-11-26 | 238 | Network Administrator |
| 240 | 1.3.4.1.3.1.4 | Implement resources in enterprise resource pool | 1d | 2003-11-21 | 2003-11-24 | 237 | Network Administrator |
| 241 | 1.3.4.1.3.1.5 | Implement security schema in Project Server | 0.5d | 2003-11-21 | 2003-11-21 | 237 | Business Analysts |
| 242 | 1.3.4.1.3.1.6 | Implement Project Center views in Microsoft Office Project Web Access 2003 | 1d | 2003-11-21 | 2003-11-24 | 237 | Project Managers |
| 243 | 1.3.4.1.3.1.7 | Implement Project views in Microsoft Office Project Web Access 2003 | 1d | 2003-11-21 | 2003-11-24 | 237 | Project Managers |
| 244 | 1.3.4.1.3.1.8 | Implement Resource Center views in Microsoft Office Project Web Access 2003 | 0.5d | 2003-11-21 | 2003-11-21 | 237 | Project Managers; Application Developers |
| 245 | 1.3.4.1.3.1.9 | Implement Assignment views in Microsoft Office Project Web Access 2003 | 1d | 2003-11-21 | 2003-11-21 |  | Project Managers |
| 246 | 1.3.4.1.3.1.10 | Implement Portfolio Analyzer views in Microsoft Office Project Web Access 2003 | 1d | 2003-11-21 | 2003-11-21 |  | Project Managers |
| 247 | 1.3.4.1.3.1.11 | Create models in Microsoft Office Project Web Access 2003 | 0.5d | 2003-11-21 | 2003-11-21 | 237 | Project Managers |
| 248 | 1.3.4.1.3.1.12 | Obtain and configure SMTP server information | 0.25d | 2003-11-21 | 2003-11-21 | 237 | Network Administrator |
| 249 | 1.3.4.1.3.1.13 | Implement notifications and reminders in Project Server | 0.25d | 2003-11-21 | 2003-11-21 | 248 | Business Analysts |

| ID | WBS | Task | Duration | Start | Finish | Predecessors | Resources |
| --- | --- | --- | --- | --- | --- | --- | --- |
| 250 | 1.3.4.1.3.1.14 | **Execute Migration Plan** | 5d | 2003-11-21 | 2003-11-28 | 249 |  |
| 251 | 1.3.4.1.3.1.14.1 | Migrate resources | 2d | 2003-11-21 | 2003-11-25 |  | Project Managers |
| 252 | 1.3.4.1.3.1.14.2 | Migrate project plans | 2d | 2003-11-21 | 2003-11-25 |  | Project Managers |
| 253 | 1.3.4.1.3.1.14.3 | Migrate templates | 1d | 2003-11-21 | 2003-11-24 |  | Project Managers |
| 254 | 1.3.4.1.3.1.14.4 | Migrate databases | 2d | 2003-11-21 | 2003-11-25 |  | Project Managers |
| 255 | 1.3.4.1.3.1.14.5 | Migrate macros | 5d | 2003-11-21 | 2003-11-28 |  | Application Developers |
| 256 | 1.3.4.1.3.1.14.6 | Migrate custom Project Guides | 5d | 2003-11-21 | 2003-11-28 |  | Application Developers |
| 257 | 1.3.4.1.3.2 | **Configure Microsoft SharePoint Portal Server "v2.0"** | 0.5d | 2003-11-28 | 2003-12-01 | 236 |  |
| 258 | 1.3.4.1.3.2.1 | Set up Microsoft SharePoint Portal Server "v2.0" connection in Microsoft Office Project Web Access 2003 | 0.5d | 2003-11-28 | 2003-12-01 |  | Server Administrator |
| 259 | 1.3.4.1.3.2.2 | Configure Microsoft SharePoint Portal Server "v2.0" indexing | 0.5d | 2003-11-28 | 2003-12-01 |  | Server Administrator |
| 260 | 1.3.4.1.3.2.3 | Connect existing team sites to the portal | 0.5d | 2003-11-28 | 2003-12-01 |  | Server Administrator |
| 261 | 1.3.4.1.3.3 | **Configure Windows SharePoint Services** | 1d | 2003-11-28 | 2003-12-01 | 236 |  |
| 262 | 1.3.4.1.3.3.1 | Validate PSCOMPlus settings | 0.25d | 2003-11-28 | 2003-11-28 |  | Server Administrator |
| 263 | 1.3.4.1.3.3.2 | Configure proxy server | 0.25d | 2003-11-28 | 2003-11-28 |  | Network Administrator |
| 264 | 1.3.4.1.3.3.3 | Configure SharePoint connection settings and site creation settings | 1d | 2003-11-28 | 2003-12-01 |  | Server Administrator |
| 265 | 1.3.4.1.3.3.4 | Configure Windows SharePoint Services site templates | 1d | 2003-11-28 | 2003-12-01 |  | Server Administrator |
| 266 | 1.3.4.1.3.3.5 | Configure cross-web security | 1d | 2003-11-28 | 2003-12-01 |  | Server Administrator |
| 267 | 1.3.4.1.3.4 | **Configure Analysis Services** | 1d | 2003-11-28 | 2003-12-01 | 236 |  |
| 268 | 1.3.4.1.3.4.1 | Assign cube roles and permissions | 1d | 2003-11-28 | 2003-12-01 |  | Database Administrator |
| 269 | 1.3.4.1.3.4.2 | Validate PSCOMPlus OLAP identity | 1d | 2003-11-28 | 2003-12-01 |  | Network Administrator |
| 270 | 1.3.4.2 | **Perform Desktop Deployment** | 5d | 2003-12-01 | 2003-12-08 | 217 |  |
| 271 | 1.3.4.2.1 | **Perform Scripted Deployment** | 2d | 2003-12-01 | 2003-12-03 |  |  |
| 272 | 1.3.4.2.1.1 | Create deployment script | 2d | 2003-12-01 | 2003-12-03 |  | Desktop Support |
| 273 | 1.3.4.2.1.2 | Schedule running of deployment script | 0.5d | 2003-12-01 | 2003-12-02 |  | Desktop Support |
| 274 | 1.3.4.2.2 | Deploy Terminal Services Client | 2.5d | 2003-12-01 | 2003-12-04 |  | Desktop Support |

Notes:
- 274: Using Terminal Services Client will improve performance if you have project managers connecting to your Project Server over a WAN.

| ID | WBS | Task | Type | Duration | Start | Finish | Predecessors | Resources |
| --- | --- | --- | --- | --- | --- | --- | --- | --- |
| 275 | 1.3.4.2.3 | **Perform Manual Deployment** |  | 3d | 2003-12-01 | 2003-12-04 |  |  |
| 276 | 1.3.4.2.3.1 | Develop specifications and documentation for running Setup |  | 3d | 2003-12-01 | 2003-12-04 |  | Desktop Support |
| 277 | 1.3.4.2.3.2 | Provide location to run Setup |  | 0.5d | 2003-12-01 | 2003-12-02 |  | Network Administrator |
| 278 | 1.3.4.2.4 | **Configure Internet Explorer** |  | 0.5d | 2003-12-01 | 2003-12-02 |  |  |
| 279 | 1.3.4.2.4.1 | Configure trusted sites |  | 0.5d | 2003-12-01 | 2003-12-02 |  | Desktop Support |
| 280 | 1.3.4.2.4.2 | Configure automatic download of ActiveX in trusted sites zone |  | 0.5d | 2003-12-01 | 2003-12-02 |  | Desktop Support |
| 281 | 1.3.4.2.4.3 | Allow cookies |  | 0.5d | 2003-12-01 | 2003-12-02 |  | Desktop Support |
| 282 | 1.3.4.2.5 | Install the Microsoft Office System on desktop as desired/needed |  | 5d | 2003-12-01 | 2003-12-08 |  | Desktop Support |
| 283 | 1.3.4.3 | Implement production versions of planned system integrations |  | 30d | 2003-12-08 | 2004-01-19 | 270 | Application Developers |
| 284 | 1.3.4.4 | **Test the Production Deployment** |  | 1d | 2004-01-19 | 2004-01-20 | 283 |  |
| 285 | 1.3.4.4.1 | Test system function |  | 1d | 2004-01-19 | 2004-01-20 |  | Project Managers |
| 286 | 1.3.4.4.2 | **Resolve issues** |  | 1d | 2004-01-19 | 2004-01-20 |  |  |
| 287 | 1.3.4.4.2.1 | Resolve connectivity problems |  | 1d | 2004-01-19 | 2004-01-20 |  | Network Administrator [25%] |
| 288 | 1.3.4.4.2.2 | Resolve installation problems |  | 1d | 2004-01-19 | 2004-01-20 |  | Database Administrator [25%]; Server Administrator [25%]; Systems Architect [25%]; Desktop Support [25%] |
| 289 | 1.3.4.4.3 | Scrub test data |  | 1d | 2004-01-19 | 2004-01-20 |  | Database Administrator |
| 290 | 1.3.4.5 | Deploy production system complete | milestone | 0d | 2004-01-20 | 2004-01-20 | 284 | Business Analysts; Project Managers; Team Members |
| 291 | 1.3.5 | **Migrate Pilot Data to Production** |  | 4d | 2004-01-20 | 2004-01-26 | 216 |  |
| 292 | 1.3.5.1 | Migrate pilot databases |  | 1d | 2004-01-20 | 2004-01-21 |  | Database Administrator |
| 293 | 1.3.5.2 | Migrate Windows SharePoint Services information |  | 2d | 2004-01-21 | 2004-01-23 | 292 | Database Administrator; Server Administrator |
| 294 | 1.3.5.3 | Migrate or rebuild OLAP cubes |  | 0.5d | 2004-01-23 | 2004-01-26 | 293 | Database Administrator |
| 295 | 1.3.5.4 | Migrate Portfolio Analyzer views |  | 0.5d | 2004-01-26 | 2004-01-26 | 294 | Database Administrator |
| 296 | 1.3.5.5 | Migrate pilot data to production complete | milestone | 0d | 2004-01-26 | 2004-01-26 | 295 |  |
| 297 | 1.3.6 | Deployment complete | milestone | 0d | 2004-01-26 | 2004-01-26 | 216, 291 |  |
| 298 | 1.4 | **Post-deployment** |  | 30d | 2004-01-26 | 2004-03-08 | 138 |  |
| 299 | 1.4.1 | **Implement and Test Backup** |  | 1.25d | 2004-01-26 | 2004-01-27 |  |  |
| 300 | 1.4.1.1 | Implement backup strategy for Project Server |  | 0.5d | 2004-01-26 | 2004-01-27 |  | Database Administrator; Server Administrator |
| 301 | 1.4.1.2 | Implement backup strategy for Windows SharePoint Services |  | 0.5d | 2004-01-26 | 2004-01-27 |  | Database Administrator; Server Administrator |
| 302 | 1.4.1.3 | Test Project Server backup strategy |  | 0.5d | 2004-01-27 | 2004-01-27 | 300 | Database Administrator; Server Administrator |
| 303 | 1.4.1.4 | Test Windows SharePoint Services backup strategy |  | 0.5d | 2004-01-27 | 2004-01-27 | 301 | Database Administrator; Server Administrator |
| 304 | 1.4.1.5 | Implement and test disaster planning and recovery strategy |  | 0.25d | 2004-01-27 | 2004-01-27 | 302, 303 | Database Administrator; Network Administrator; Server Administrator; Systems Architect |
| 305 | 1.4.1.6 | Implement and test backup complete | milestone | 0d | 2004-01-27 | 2004-01-27 | 304 |  |

| ID | WBS | Task | Type | Duration | Start | Finish | Predecessors | Resources |
| --- | --- | --- | --- | --- | --- | --- | --- | --- |
| 306 | 1.4.2 | **Implement Performance Tuning and Monitoring** |  | 30d | 2004-01-26 | 2004-03-08 |  |  |
| 307 | 1.4.2.1 | Observe performance parameters using performance monitor |  | 30d | 2004-01-26 | 2004-03-08 |  | Database Administrator [6%]; Server Administrator [6%] |
| 308 | 1.4.2.2 | Compare performance to plan |  | 30d | 2004-01-26 | 2004-03-08 |  | Database Administrator [6%]; Server Administrator [6%] |
| 309 | 1.4.2.3 | Tweak settings as needed |  | 30d | 2004-01-26 | 2004-03-08 |  | Database Administrator [6%]; Server Administrator [6%] |
| 310 | 1.4.2.4 | Re-forecast demand and plan appropriately |  | 30d | 2004-01-26 | 2004-03-08 |  | Database Administrator [6%]; Server Administrator [6%] |
| 311 | 1.4.2.5 | Implement performance tuning and monitoring complete | milestone | 0d | 2004-03-08 | 2004-03-08 | 307, 308, 309, 310 |  |
| 312 | 1.4.3 | **Set up System Maintenance** |  | 30d | 2004-01-26 | 2004-03-08 |  |  |
| 313 | 1.4.3.1 | Create SQL Server maintenance plans |  | 0.5d | 2004-01-26 | 2004-01-27 |  | Database Administrator |
| 314 | 1.4.3.2 | Administer user accounts |  | 30d | 2004-01-26 | 2004-03-08 |  | Database Administrator [4%] |
| 315 | 1.4.3.3 | Monitor log and data files |  | 30d | 2004-01-26 | 2004-03-08 |  | Database Administrator [4%] |
| 316 | 1.4.3.4 | Set up system maintenance complete | milestone | 0d | 2004-03-08 | 2004-03-08 | 313, 314, 315 |  |
| 317 | 1.4.4 | Obtain user feedback |  | 1d | 2004-01-26 | 2004-01-27 |  | Business Analysts; Project Managers; Team Members |
| 318 | 1.4.5 | Evaluate lessons learned |  | 1d | 2004-01-27 | 2004-01-28 | 317 | Business Analysts; Project Managers; Team Members |
| 319 | 1.4.6 | Modify items as necessary |  | 3d | 2004-01-28 | 2004-02-02 | 318 | Business Analysts |
| 320 | 1.4.7 | Establish on-going Microsoft Project users team |  | 1d | 2004-02-02 | 2004-02-03 | 319 | Business Analysts; Project Managers; Team Members |
| 321 | 1.4.8 | Post-deployment complete | milestone | 0d | 2004-03-08 | 2004-03-08 | 319, 312, 306, 299 |  |
| 322 | 1.5 | Microsoft Project 2003 deployment complete | milestone | 0d | 2004-03-08 | 2004-03-08 | 298 |  |
