# New Product

Schedule from ProjectLibre, 2004-07-19 to 2004-12-22.

## Calendars

- Standard[Imported]: Mon-Fri 08:00-12:00, 13:00-17:00; Sat-Sun off.

## Resources

| Resource | Group | Rate | Cost per use |
| --- | --- | --- | --- |
| Unassigned |  |  |  |
| Scott Adams | Production | 8 |  |
| Mary Logan | Production | 10 |  |
| Howard Thompson | Sales | 22.5 | 1000 |
| Mel Lloyd | Shipping | 15 |  |
| Jenny Benson | Personnel | 35 |  |
| Assemblers | Assembly | 8.5 |  |
| Bill Kirk | Design | 16.83 |  |
| John Melville | Finance | 14.42 |  |

## Schedule

| ID | WBS | Task | Type | Duration | Start | Finish | Predecessors | Constraint | Resources | Text1 |
| --- | --- | --- | --- | --- | --- | --- | --- | --- | --- | --- |
| 1 | 1 | Begin project | milestone | 0d | 2004-07-19 | 2004-07-19 |  |  |  |  |
| 2 | 2 | **Design Phase** |  | 55d | 2004-07-19 | 2004-10-01 |  |  |  |  |
| 3 | 2.1 | Prototype design |  | 25d | 2004-07-19 | 2004-08-20 |  |  | Bill Kirk; Scott Adams [50%] |  |
| 4 | 2.2 | Test prototype |  | 20d | 2004-09-05 | 2004-10-01 | 3 | start no earlier than 2004-09-05 | Bill Kirk; Scott Adams | 123-09 |
| 5 | 2.3 | Prototype completed | milestone | 0d | 2004-10-01 | 2004-10-01 | 4 |  |  |  |
| 6 | 3 | **Finance Phase** |  | 45d | 2004-07-19 | 2004-09-17 |  |  |  |  |
| 7 | 3.1 | Create business plan |  | 15d | 2004-07-19 | 2004-08-06 |  |  | John Melville |  |
| 8 | 3.2 | Present to current investors | milestone | 0d | 2004-08-06 | 2004-08-06 | 7 |  | John Melville |  |
| 9 | 3.3 | Meet with bankers | milestone | 0d | 2004-08-06 | 2004-08-06 | 8 |  | John Melville |  |
| 10 | 3.4 | Circulate plan w/ venture capitalists |  | 5d | 2004-08-09 | 2004-08-13 | 8 |  | John Melville |  |
| 11 | 3.5 | Negotiate with venture capitalists |  | 10d | 2004-08-16 | 2004-08-27 | 10 |  | John Melville |  |
| 12 | 3.6 | Reach agreement | milestone | 0d | 2004-08-27 | 2004-08-27 | 11 |  |  |  |
| 13 | 3.7 | Create legal documentation |  | 15d | 2004-08-30 | 2004-09-17 | 12 |  | John Melville |  |
| 14 | 3.8 | Financing closed | milestone | 0d | 2004-09-17 | 2004-09-17 | 13 |  |  |  |
| 15 | 2 | **Production Phase** |  | 73d | 2004-08-16 | 2004-11-24 |  |  |  |  |
| 16 | 2.1 | Setup assembly line |  | 15d | 2004-10-04 | 2004-10-22 | 5 |  | Scott Adams | 12-657 |
| 17 | 2.2 | Hire assemblers |  | 50d | 2004-08-16 | 2004-10-22 | 16FF |  | Scott Adams | 12-554 |
| 18 | 2.3 | Assemble first batch |  | 3d | 2004-10-25 | 2004-10-27 | 5, 16, 17 |  | Assemblers | 43-291 |
| 19 | 2.4 | Quality testing |  | 10d | 2004-10-28 | 2004-11-10 | 18 |  | Bill Kirk |  |
| 20 | 2.5 | Assemble product |  | 10d | 2004-11-11 | 2004-11-24 | 19 |  | Assemblers |  |
| 21 | 2.4 | Inventory available | milestone | 0d | 2004-11-24 | 2004-11-24 | 20 |  |  |  |
| 22 | 5 | **Marketing and Sales Phase** |  | 30d | 2004-09-20 | 2004-10-29 | 6 |  |  |  |
| 23 | 5.1 | Develop marketing plan |  | 5d | 2004-09-20 | 2004-09-24 |  |  | Howard Thompson |  |
| 24 | 5.2 | Create sales materials |  | 25d | 2004-09-27 | 2004-10-29 | 23 |  | Howard Thompson |  |
| 25 | 5.3 | Create advertising plan |  | 15d | 2004-09-27 | 2004-10-15 | 23 |  | Howard Thompson |  |
| 26 | 5.4 | Develop PR plan |  | 15d | 2004-09-27 | 2004-10-15 | 23 |  | Howard Thompson |  |
| 27 | 5.5 | Sales training |  | 15d | 2004-10-11 | 2004-10-29 | 24FS-15d |  | Howard Thompson |  |
| 28 | 5.6 | Start sales program | milestone | 0d | 2004-10-29 | 2004-10-29 | 27 |  |  |  |

| ID | WBS | Task | Type | Duration | Start | Finish | Predecessors | Resources | Text1 |
| --- | --- | --- | --- | --- | --- | --- | --- | --- | --- |
| 29 | 3 | **Distribution Phase** |  | 16d | 2004-11-25 | 2004-12-16 | 15 |  |  |
| 30 | 3.1 | Stock warehouse |  | 7d | 2004-11-25 | 2004-12-03 |  | Scott Adams |  |
| 31 | 3.2 | Process orders |  | 5d | 2004-12-06 | 2004-12-10 | 30 | Scott Adams | 12-098 |
| 32 | 3.3 | Organize shipments |  | 5d | 2004-12-06 | 2004-12-10 | 30 | Mel Lloyd | 12-098 |
| 33 | 3.4 | Load trucks |  | 4d | 2004-12-13 | 2004-12-16 | 32 | Mel Lloyd | 12-098 |
| 34 | 3.5 | First shipment | milestone | 0d | 2004-12-16 | 2004-12-16 | 21, 33 |  |  |
| 35 | 4 | **Regional Promotions** |  | 20d | 2004-11-24 | 2004-12-22 | 15 |  |  |
| 36 | 4.1 | PR announcement event | milestone | 0d | 2004-11-24 | 2004-11-24 |  |  |  |
| 37 | 4.2 | Begin advertising campaign | milestone | 0d | 2004-11-24 | 2004-11-24 | 36 |  |  |
| 38 | 4.1 | West Coast promo week |  | 5d | 2004-11-25 | 2004-12-01 | 37 | Howard Thompson | 19-021 |
| 39 | 4.2 | East Coast promo week |  | 5d | 2004-12-02 | 2004-12-08 | 38 | Howard Thompson | 19-021 |
| 40 | 4.3 | Northern Region promo week |  | 5d | 2004-12-09 | 2004-12-15 | 39 | Howard Thompson | 19-021 |
| 41 | 4.4 | Southern Region promo week |  | 5d | 2004-12-16 | 2004-12-22 | 40 | Howard Thompson | 19-021 |
| 42 | 4.5 | End project | milestone | 0d | 2004-12-22 | 2004-12-22 | 31, 41 |  | 19-021 |
